# HITSS Integrated Master Schedule(Summary)

Schedule from MS Project, 2017-12-12 to 2018-01-03, status date 2017-07-24, A marks actual dates.

## Calendars

- HITSS Calendar: Mon-Fri 08:00-12:00, 13:00-17:00; Sat-Sun off.
- HITSS Calendar 2014-2015: Mon-Fri 08:00-12:00, 13:00-17:00; Sat-Sun off.

## Resources

| Resource | Group | Rate | Notes |
| --- | --- | --- | --- |
| Aghmiuni Hooshang |  |  |  |
| Ahmed Adel |  |  |  |
| Antypas Sonia |  |  |  |
| Aslam Sohail |  |  |  |
| Ayala Luis |  |  |  |
| Baker Al |  |  |  |
| Belanga Kevin |  |  |  |
| Bellucci Laura |  |  |  |
| Besch Bruce |  |  |  |
| Blasco Corrine |  |  |  |
| Bowerman Christopher |  |  |  |
| Breighner Thomas |  |  |  |
| Brenner Greggory |  |  |  |
| Brockway Lori Swift |  |  |  |
| Brooks Cecily |  |  |  |
| Brooks Janene |  |  |  |
| Brown Ericka |  |  |  |
| Brunner Christopher |  |  |  |
| Buffington Tadd |  |  |  |
| Bybel-Roys Branan |  |  |  |
| Case Benjamin |  |  |  |
| Castillo Diana |  |  |  |
| Chang Philip |  |  |  |
| Comstock Gregory |  |  |  |
| Conaway Scott |  |  |  |
| Conaway Tyler |  |  |  |
| Consalvi James |  |  |  |
| Cooper Dennis |  |  |  |
| Dalpezzo Robin |  |  |  |
| David Leonard |  |  | 50% |
| Davis Debbie |  |  |  |
| Davis Michaela |  |  |  |
| Dean Alex |  |  |  |
| Derdouri Stephanie |  |  |  |
| Deutsch Rob |  |  |  |
| Dollar Andrew |  |  |  |
| Dortch Darryl |  |  |  |
| Eatmon Lanetta |  |  |  |
| Essick David |  |  |  |
| Essick Vicky |  |  |  |
| Fernandez Nicolette |  |  |  |
| Fesler Jeffrey |  |  |  |
| Fiddler Sherry |  |  |  |
| Firth Kevin |  |  |  |
| Fitzgerald Maureen |  |  |  |
| Flax Ronald |  |  |  |
| Fox Stephen |  |  |  |
| George Brian |  |  |  |
| Gipson Lillian |  |  |  |
| Godbey David |  |  |  |
| Goetzelt Jochen Hans |  |  |  |
| Golden Candyce |  |  |  |
| Gomes Joe |  |  |  |
| Gong Zhaoxin |  |  |  |
| Gregorio Joel |  |  |  |
| Gries Scott |  |  |  |
| Grinnell James |  |  |  |
| Groves Mika |  |  |  |
| Gudger Nicole |  |  |  |
| Gunlock Darren |  |  |  |
| Haileselassie Antonio |  |  |  |
| Hall Loura |  |  |  |
| Hamilton Dirk |  |  |  |
| Hamlet Tanya |  |  |  |
| Harris Michael |  |  |  |
| Harwood Grace |  |  |  |
| Hatten Shauntoria |  |  |  |
| Hawthorne Christopher |  |  |  |
| Hayes Robert |  |  |  |
| Hedges Sean |  |  |  |
| Hiland Scott |  |  | 50% |
| Ho Michael |  |  |  |
| Holmes Marthenia |  |  |  |
| Hon Siew |  |  |  |
| Ibbott Anita |  |  |  |
| Israel Ebony |  |  |  |
| Jiang Jonathan (Zhuqin) |  |  |  |
| Johnson Scott |  |  |  |
| Johnson William |  |  |  |
| Jones Julienne |  |  |  |
| Kaiser Colleen |  |  |  |
| Keeter William |  |  |  |
| Kelley Richard |  |  |  |
| Kenemuth Brad |  |  |  |
| Kent Bridget |  |  |  |
| Key Keshea |  |  |  |
| Khalifa Nurul |  |  |  |
| Khan Enayet |  |  |  |
| Kopelen Jenny (Mottar) |  |  |  |
| Laden Lisa |  |  |  |
| Le Khanh |  |  |  |
| Le Marithe AnhMinh |  |  |  |
| Lee Scott |  |  |  |
| Lewinski Brett |  |  |  |
| Li Meng |  |  |  |
| Liang Wen |  |  |  |
| Lin Tai |  |  |  |
| Liu Weishing |  |  |  |
| Luke Kathryn |  |  |  |
| Macloskey Stuart |  |  |  |
| Magnuson Karl |  |  |  |
| Manketo Phillip |  |  |  |
| Markiewicz Kelly |  |  |  |
| May Richard |  |  |  |
| McCluer Hunter |  |  |  |
| McKinzie Matthew |  |  |  |
| McPherson Alicia |  |  |  |
| Mijares Francisco |  |  |  |
| Mishra Monalisha |  |  |  |
| Mitchell Terri |  |  |  |
| Mochinski Ron |  |  |  |
| Mohammed Muktar |  |  |  |
| Moran Jillian |  |  |  |
| Motsinger Ed |  |  |  |
| Mullings Kim |  |  |  |
| Nelson Stephanie |  |  |  |
| Newell Michael |  |  |  |
| Newton Lewis |  |  |  |
| Nicholson Jeff |  |  |  |
| Niemiec Tyler |  |  |  |
| Nowell Stephen |  |  |  |
| O'Brien Reed |  |  |  |
| O'Connor Kathleen |  |  |  |
| Osbourn Christopher |  |  |  |
| Penn Brian |  |  |  |
| Phipps Linda |  |  |  |
| Pleasant Kim |  |  |  |
| Powell Kevin |  |  |  |
| Pretlor Dawayne |  |  |  |
| Pritchard Gail | Quality Analysts | 74.61 |  |
| Queen Teresa |  |  |  |
| Ratliff Tiyra |  |  |  |
| Reaves Kelly |  |  |  |
| Ricketts Kurt |  |  |  |
| Ross Leslie |  |  |  |
| Ryan Robert |  |  |  |
| Said Karim |  |  |  |
| Salazar Luis F |  |  |  |
| Salinas Jose |  |  |  |
| Sallaway Michele |  |  |  |
| Schattmaier Susan |  |  |  |
| Scott Cody |  |  |  |
| Sedighi Banafsheh |  |  |  |
| Sehgal Salil |  |  |  |
| Shah Dhatri |  |  |  |
| Shaw Nathan |  |  |  |
| Shelton Tom |  |  |  |
| Shenton Chris |  |  |  |
| Sheridan Lee |  |  |  |
| Shore-Suslowitz Rebecca | IT Security Specialist (IV&V) | 113.66 |  |
| Silwick Serena |  |  |  |
| Singh Gurvinderpal |  |  |  |
| Smith Claire (Charlotte) |  |  |  |
| Smith Daniel |  |  |  |
| Smith Lisa |  |  |  |
| Soren Michael |  |  |  |
| Ssemwogerere Joseph |  |  |  |
| Summer Gregory |  |  |  |
| Suritis Rob |  |  |  |
| Taggart John |  |  |  |
| Talbert Patricia |  |  |  |
| Tao Lili |  |  |  |
| Taylor Joan |  |  |  |
| Teel Terrence |  |  |  |
| Teems Bryce |  |  |  |
| Thomas Karen |  |  |  |
| Thomas Yvonne |  |  |  |
| Topper Craig |  |  |  |
| Tramontozzi Mark |  |  |  |
| Triner Matthew |  |  |  |
| Trouard Phyllis |  |  |  |
| Twalia Caroline |  |  |  |
| Varros George |  |  |  |
| Vaughn Davetta |  |  |  |
| Vazzana Angela Craig |  |  |  |
| Veillette Mike |  |  |  |
| Vogel Patrick |  |  |  |
| Walsh Ellen |  |  |  |
| Walsh Jonathan |  |  |  |
| Walteros Hernando |  |  |  |
| Walton Regina |  |  |  |
| Ward Jamie |  |  |  |
| Weakley Lance |  |  |  |
| Webb Carlyle |  |  |  |
| Weiss Stephen |  |  |  |
| Werries Maria |  |  |  |
| Wesley Alicia |  |  |  |
| Williams Anthony |  |  |  |
| Winters Robert |  |  |  |
| Young Tom |  |  |  |
| Young-Hall Timeka |  |  |  |
| Zhu Jonathan |  |  |  |
| Zilliacus Marcia |  |  |  |
| Alapick |  |  |  |
| Smith |  |  |  |
| Lisa |  |  |  |
| DBA |  |  |  |
| Team |  |  |  |
| OPS |  |  |  |
| CR Module |  |  |  |
| CR Mo |  |  |  |
| ENG |  |  |  |
| Ppc |  |  |  |
| Hamlet |  |  |  |
| Tanya |  |  |  |
| Alapick Lisa |  |  |  |
| Li |  |  |  |
| Meng |  |  |  |
| Hamet Tanya |  |  |  |
| CM |  |  |  |
| App Dev/Ops |  |  |  |
| App Dev |  |  |  |
| ENgineering |  |  |  |
| DM/PM |  |  |  |
| NAMS Admin |  |  |  |
| ENgineering/Ops |  |  |  |

## Schedule

| ID | WBS | Task | Type | Duration | Start | Finish | Predecessors | Complete | Actual start | Actual finish | Baseline start | Baseline finish | Baseline duration | Constraint | Calendar | Resources | Work | Actual work |
| --- | --- | --- | --- | --- | --- | --- | --- | --- | --- | --- | --- | --- | --- | --- | --- | --- | --- | --- |
| 1 | 1 | **CM Team - Archive** |  | 17d | 2017-12-12 A | 2018-01-03 A |  | 100% |  |  | 2017-01-03 | 2017-01-27 | 17d |  | HITSS Calendar |  | 248h | 248h |
| 2 | 1.1 | **WR 2017-0001347: Archive the Career Management Tracking System (CMTS)** |  | 17d | 2017-12-12 A | 2018-01-03 A |  | 100% |  |  |  |  |  |  | HITSS Calendar |  | 248h | 248h |
| 3 | 1.1.1 | **Archive Execution** |  | 17d | 2017-12-12 A | 2018-01-03 A |  | 100% |  |  |  |  |  |  | HITSS Calendar |  | 248h | 248h |
| 4 | 1.1.1.1 | **Execution** |  | 14d | 2017-12-12 A | 2017-12-29 A |  | 100% |  |  | 2017-02-10 | 2017-02-14 | 2d |  | HITSS Calendar |  | 200h | 200h |
| 5 | 1.1.1.1.1 | Request and gain Accession Number |  | 1d | 2017-12-13 A | 2017-12-13 A |  | 100% |  |  |  |  |  | start no earlier than 2017-11-20 | HITSS Calendar | CM | 8h | 8h |
| 6 | 1.1.1.1.2 | Download, complete, and upload media labels |  | 4d | 2017-12-12 A | 2017-12-18 A | 5 | 100% |  |  |  |  |  | finish no earlier than 2017-12-15 | HITSS Calendar | CM | 32h | 32h |
| 7 | 1.1.1.1.3 | Identify dependencies from ICD |  | 1d | 2017-12-19 A | 2017-12-19 A | 6 | 100% |  |  | 2017-02-10 | 2017-02-13 | 1d | start no earlier than 2017-12-19 | HITSS Calendar | App Dev/Ops | 8h | 8h |
| 8 | 1.1.1.1.4 | Identify and remove links on Web sites |  | 1d | 2017-12-20 A | 2017-12-20 A | 7 | 100% |  |  |  |  |  | start no earlier than 2017-11-24 | HITSS Calendar | App Dev | 8h | 8h |
| 9 | 1.1.1.1.5 | Update ICD in RAM |  | 1d | 2017-12-21 A | 2017-12-21 A | 8 | 100% |  |  |  |  |  | start no earlier than 2017-08-10 | HITSS Calendar | App Dev | 8h | 8h |
| 10 | 1.1.1.1.6 | Remove code from repository |  | 1d | 2017-12-22 A | 2017-12-22 A | 9 | 100% |  |  |  |  |  | start no earlier than 2017-08-10 | HITSS Calendar | CM | 8h | 8h |
| 11 | 1.1.1.1.7 | Request DB dump from DBAs |  | 1d | 2017-12-25 A | 2017-12-25 A | 10 | 100% |  |  |  |  |  | start no earlier than 2017-08-10 | HITSS Calendar | OPS | 8h | 8h |
| 12 | 1.1.1.1.8 | Provide database code (if applicable) |  | 1d | 2017-12-26 A | 2017-12-26 A | 11 | 100% |  |  |  |  |  | start no earlier than 2017-08-10 | HITSS Calendar | DBA | 8h | 8h |
| 13 | 1.1.1.1.9 | Delete Launchpad profile |  | 1d | 2017-12-27 A | 2017-12-27 A | 12 | 100% |  |  |  |  |  | start no earlier than 2017-08-10 | HITSS Calendar | ENgineering | 8h | 8h |
| 14 | 1.1.1.1.10 | Save all code on storage media |  | 1d | 2017-12-28 A | 2017-12-28 A | 13 | 100% |  |  | 2017-02-13 | 2017-02-14 | 1d | start no earlier than 2017-08-10 | HITSS Calendar | OPS | 8h | 8h |
| 15 | 1.1.1.1.11 | Archive dev/Stage environments | milestone | 0d | 2017-12-28 A | 2017-12-28 A | 14 | 100% |  |  | 2017-02-13 | 2017-02-14 | 1d | finish no earlier than 2017-08-31 | HITSS Calendar | ENgineering |  |  |
| 16 | 1.1.1.1.12 | Execute Decommision CR |  | 1d | 2017-12-29 A | 2017-12-29 A | 15 | 100% |  |  |  |  |  | finish no earlier than 2017-12-29 | HITSS Calendar | OPS | 96h | 96h |
| 17 | 1.1.1.2 | **Deliver Media and Documentation** |  | 6d | 2017-12-20 | 2017-12-27 |  | 100% | 2017-12-13 | 2017-12-26 | 2017-02-14 | 2017-02-22 | 4.75d |  | HITSS Calendar |  | 4h | 4h |
| 18 | 1.1.1.2.1 | Deliver Approved Media to FRC and Application Owner |  | 10d | 2017-12-13 A | 2017-12-26 A |  | 100% |  |  | 2017-02-22 | 2017-02-22 | 0.5d | start no earlier than 2017-12-13 | HITSS Calendar | DM/PM | 4h | 4h |
| 19 | 1.1.1.3 | **Post CR Activities** |  | 3.5d | 2017-12-29 A | 2018-01-03 A |  | 100% |  |  | 2017-02-22 | 2017-02-23 | 1d |  | HITSS Calendar |  | 44h | 44h |
| 20 | 1.1.1.3.1 | Shutdown VM |  | 2d | 2018-01-01 A | 2018-01-02 A | 18 | 100% |  |  | 2017-02-22 | 2017-02-22 | 0.1d | finish no earlier than 2018-01-02 | HITSS Calendar | OPS | 8h | 8h |
| 21 | 1.1.1.3.2 | Update RAM |  | 3d | 2017-12-29 A | 2018-01-02 A |  | 100% |  |  | 2017-02-22 | 2017-02-23 | 0.5d | start no earlier than 2017-12-29 | HITSS Calendar | CM | 8h | 8h |
| 22 | 1.1.1.3.3 | Update NAMS |  | 0.5d | 2018-01-03 A | 2018-01-03 A | 21 | 100% |  |  | 2017-02-22 | 2017-02-23 | 0.5d | finish no earlier than 2018-01-02 | HITSS Calendar | NAMS Admin | 8h | 8h |
| 23 | 1.1.1.3.4 | Update APAT |  | 3d | 2017-12-29 A | 2018-01-02 A |  | 100% |  |  | 2017-02-22 | 2017-02-22 | 0.1d | start no earlier than 2017-12-29 | HITSS Calendar | CM | 16h | 16h |
| 24 | 1.1.1.3.5 | Update STRAW |  | 0.5d | 2018-01-03 A | 2018-01-03 A | 23 | 100% |  |  | 2017-02-22 | 2017-02-22 | 0.25d |  | HITSS Calendar | CM [50%] | 4h | 4h |
| 25 | 1.1.1.4 | Gain Concurrence from Customer to Close WR | milestone, manual | 0d | 2018-01-03 A | 2018-01-03 A | 21, 22, 23, 24 | 100% |  |  |  |  |  | start no earlier than 2018-01-31 | HITSS Calendar | CM |  |  |
